# 三味书屋

Schedule from MS Project, 2020-03-16 to 2020-06-18, costs in ¥.

## Calendars

- 标准: Mon-Fri 08:00-12:00, 13:00-17:00; Sat-Sun off.

## Resources

| Resource | Group | Rate |
| --- | --- | --- |
| 康晓慧 | 项目经理 | 300 |
| 刘潭 | UI设计师 | 300 |
| 张浩宇 | 测试专家,程序员1 | 300 |
| 王明杰 | 产品经理,程序员2 | 300 |
| 张晨旭 | 技术专家,程序员3 | 300 |
| 电脑 |  | 4000 |
| 间接成本 |  |  |
| 储备资金 |  |  |

## Schedule

| ID | WBS | Task | Duration | Start | Finish | Predecessors | Total slack | Free slack | Constraint | Resources | Work | Cost |
| --- | --- | --- | --- | --- | --- | --- | --- | --- | --- | --- | --- | --- |
| 1 | 1 | **启动** | 11d | 2020-03-16 | 2020-03-30 |  | 0d |  |  | 间接成本 [0.1%]; 储备资金 [0.1%] | 280h | 89,500 |
| 2 | 1.1 | 任命项目经理 | 1d | 2020-03-16 | 2020-03-16 |  | 0d |  |  | 康晓慧; 刘潭; 王明杰; 张晨旭; 张浩宇 | 40h | 12,000 |
| 3 | 1.2 | 组建核心团队 | 3d | 2020-03-17 | 2020-03-19 | 2 | 0d |  |  | 电脑; 康晓慧; 刘潭; 王明杰; 张晨旭; 张浩宇 | 120h | 40,000 |
| 4 | 1.3 | 干系人分析 | 2d | 2020-03-20 | 2020-03-23 | 3 | 0d |  |  | 康晓慧; 王明杰 | 32h | 9,600 |
| 5 | 1.4 | 里程碑计划 | 2d | 2020-03-24 | 2020-03-25 | 4 | 0d |  | as late as possible | 康晓慧; 王明杰 | 32h | 9,600 |
| 6 | 1.5 | 指定项目章程 | 2d | 2020-03-26 | 2020-03-27 | 5 | 0d |  | as late as possible | 康晓慧 | 16h | 4,800 |
| 7 | 1.6 | 项目启动大会 | 1d | 2020-03-30 | 2020-03-30 | 6 | 0d |  |  | 康晓慧; 刘潭; 王明杰; 张晨旭; 张浩宇 | 40h | 12,000 |
| 8 | 2 | **规划** | 65d | 2020-03-20 | 2020-06-18 |  | 0d |  |  | 储备资金 [0.1%]; 间接成本 [0.1%] | 689.6h | 219,380 |
| 9 | 2.1 | **规划范围** | 11d | 2020-03-31 | 2020-04-14 |  | 0d |  |  |  | 225.6h | 67,680 |
| 10 | 2.1.1 | 制定需求说明书 | 2d | 2020-03-31 | 2020-04-01 | 7 | 0d |  |  | 王明杰 | 16h | 4,800 |
| 11 | 2.1.2 | 界面设计 | 4d | 2020-04-02 | 2020-04-07 | 10 | 0d |  |  | 刘潭 [80%] | 25.6h | 7,680 |
| 12 | 2.1.3 | 详细设计说明书 | 3d | 2020-04-02 | 2020-04-06 | 11SS | 0.75d | 0d |  | 王明杰; 张晨旭 | 48h | 14,400 |
| 13 | 2.1.4 | 范围说明书 | 3d | 2020-04-02 | 2020-04-06 | 12SS | 0.75d |  |  | 康晓慧; 王明杰; 张晨旭 | 72h | 21,600 |
| 14 | 2.1.5 | 创建WBS | 3d | 2020-04-08 | 2020-04-10 | 11, 12, 13 | 0d |  |  | 康晓慧; 王明杰 | 48h | 14,400 |
| 15 | 2.1.6 | 形成范围基准 | 2d | 2020-04-13 | 2020-04-14 | 14 | 0d |  |  | 王明杰 | 16h | 4,800 |
| 16 | 2.2 | **规划时间** | 47d | 2020-04-15 | 2020-06-18 |  | 0d |  |  |  | 152h | 45,600 |
| 17 | 2.2.1 | 排列工作包顺序 | 1d | 2020-04-15 | 2020-04-15 | 15 | 40d | 0d |  | 康晓慧 | 8h | 2,400 |
| 18 | 2.2.2 | 估算资源 | 2d | 2020-04-15 | 2020-04-16 | 15 | 0d |  |  | 康晓慧; 王明杰 | 32h | 9,600 |
| 19 | 2.2.3 | 估算持续时间 | 1d | 2020-04-16 | 2020-04-16 | 17 | 42d |  |  | 康晓慧; 王明杰 | 16h | 4,800 |
| 20 | 2.2.4 | 制定进度计划 | 3d | 2020-04-16 | 2020-04-20 | 17 | 40d |  |  | 王明杰; 张晨旭 | 48h | 14,400 |
| 21 | 2.2.5 | 形成进度基准 | 3d | 2020-06-16 | 2020-06-18 | 20, 19 | 0d |  | as late as possible | 王明杰; 张晨旭 | 48h | 14,400 |
| 22 | 2.3 | **规划成本** | 6d | 2020-04-17 | 2020-04-24 |  | 39d | 1d |  |  | 64h | 19,200 |
| 23 | 2.3.1 | 项目成本估算 | 4d | 2020-04-17 | 2020-04-22 | 18 | 39d | 0d |  | 康晓慧; 王明杰 | 32h | 9,600 |
| 24 | 2.3.2 | 项目预算 | 2d | 2020-04-23 | 2020-04-24 | 23 | 39d |  |  | 康晓慧; 王明杰 | 32h | 9,600 |

| ID | WBS | Task | Duration | Start | Finish | Predecessors | Total slack | Free slack | Resources | Work | Cost |
| --- | --- | --- | --- | --- | --- | --- | --- | --- | --- | --- | --- |
| 25 | 2.4 | **规划质量** | 7d | 2020-04-02 | 2020-04-10 |  | 49d | 12d |  | 56h | 16,800 |
| 26 | 2.4.1 | 制定测试计划 | 3d | 2020-04-02 | 2020-04-06 | 10 | 49d | 0d | 张浩宇 | 24h | 7,200 |
| 27 | 2.4.2 | 制定测试用例 | 4d | 2020-04-07 | 2020-04-10 | 26 | 49d |  | 张浩宇 | 32h | 9,600 |
| 28 | 2.5 | **规划人力资源** | 4d | 2020-03-20 | 2020-03-25 |  | 59d | 21d |  | 32h | 9,600 |
| 29 | 2.5.1 | 制定人力资源计划 | 2d | 2020-03-20 | 2020-03-23 | 3 | 57.25d | 0d | 王明杰 | 16h | 4,800 |
| 30 | 2.5.2 | 制定人力资源配备管理计划 | 2d | 2020-03-24 | 2020-03-25 | 29 | 57.25d | 0d | 王明杰 | 16h | 4,800 |
| 31 | 2.6 | **规划沟通** | 2d | 2020-03-26 | 2020-03-27 |  | 59d |  |  | 16h | 4,800 |
| 32 | 2.6.1 | 制定沟通管理计划 | 2d | 2020-03-26 | 2020-03-27 | 30 | 57.25d |  | 王明杰 | 16h | 4,800 |
| 33 | 2.7 | **规划采购** | 6d | 2020-04-17 | 2020-04-24 |  | 0d |  |  | 48h | 14,400 |
| 34 | 2.7.1 | 自制外购分析 | 4d | 2020-04-17 | 2020-04-22 | 18 | 0d |  | 康晓慧 | 32h | 9,600 |
| 35 | 2.7.2 | 制定采购文件 | 2d | 2020-04-23 | 2020-04-24 | 34 | 0d |  | 康晓慧 | 16h | 4,800 |
| 36 | 2.8 | **规划风险** | 6d | 2020-04-27 | 2020-05-04 |  | 31d |  |  | 64h | 19,200 |
| 37 | 2.8.1 | 识别风险 | 3d | 2020-04-27 | 2020-04-29 | 16SS, 22SS, 25SS, 28SS, 33SS, 9SS | 31d | 0d | 康晓慧 | 24h | 7,200 |
| 38 | 2.8.2 | 风险分析 | 2d | 2020-04-30 | 2020-05-01 | 37 | 31d | 0d | 康晓慧; 王明杰 | 32h | 9,600 |
| 39 | 2.8.3 | 制定风险登记册 | 1d | 2020-05-04 | 2020-05-04 | 38 | 31d | 0d | 王明杰 | 8h | 2,400 |
| 40 | 2.9 | 规划整合 | 2d | 2020-05-05 | 2020-05-06 | 39 | 31d |  | 王明杰; 康晓慧 | 32h | 9,600 |
| 41 | 3 | **执行与监控** | 55d? | 2020-03-31 | 2020-06-15 |  | 3d |  | 储备资金 [0.1%]; 间接成本 [0.1%] | 1433.6h | 505,080 |
| 42 | 3.1 | 组建项目团队 | 3d | 2020-03-31 | 2020-04-02 | 7 | 20d | 0d | 康晓慧 | 24h | 7,200 |
| 43 | 3.2 | **项目执行** | 27d? | 2020-05-05 | 2020-06-10 |  | 0d |  | 电脑 [500%] | 385.6h | 135,680 |
| 44 | 3.2.1 | 前端页面搭建 | 5d | 2020-05-05 | 2020-05-11 | 42, 89 | 0d |  | 刘潭 [80%] | 32h | 9,600 |
| 45 | 3.2.2 | **用户模块** | 11d? | 2020-05-12 | 2020-05-26 | 44 | 11d | 0d |  | 88h | 26,400 |
| 46 | 3.2.2.1 | 首页 | 1d? | 2020-05-12 | 2020-05-12 | 44 | 11d | 0d | 张浩宇 | 8h | 2,400 |
| 47 | 3.2.2.2 | 注册登录 | 1d? | 2020-05-13 | 2020-05-13 | 46 | 11d | 0d | 张浩宇 | 8h | 2,400 |
| 48 | 3.2.2.3 | 浏览书籍 | 1d? | 2020-05-14 | 2020-05-14 | 47 | 11d | 0d | 张浩宇 | 8h | 2,400 |
| 49 | 3.2.2.4 | 搜索书籍 | 1d | 2020-05-15 | 2020-05-15 | 48 | 11d | 0d | 张浩宇 | 8h | 2,400 |
| 50 | 3.2.2.5 | 书籍详情 | 1d? | 2020-05-18 | 2020-05-18 | 49 | 11d | 0d | 张浩宇 | 8h | 2,400 |
| 51 | 3.2.2.6 | 购物车 | 2d | 2020-05-19 | 2020-05-20 | 50 | 11d | 0d | 张浩宇 | 16h | 4,800 |
| 52 | 3.2.2.7 | 个人中心 | 4d | 2020-05-21 | 2020-05-26 | 51 | 11d |  | 张浩宇 | 32h | 9,600 |

| ID | WBS | Task | Duration | Start | Finish | Predecessors | Total slack | Free slack | Resources | Work | Cost |
| --- | --- | --- | --- | --- | --- | --- | --- | --- | --- | --- | --- |
| 53 | 3.2.3 | **订单模块** | 11d? | 2020-05-12 | 2020-05-26 | 45SS | 0d |  |  | 73.6h | 22,080 |
| 54 | 3.2.3.1 | 下单 | 1d? | 2020-05-12 | 2020-05-12 | 44 | 0d |  | 王明杰 | 8h | 2,400 |
| 55 | 3.2.3.2 | 查看所有订单 | 1d? | 2020-05-13 | 2020-05-13 | 54 | 0d |  | 王明杰 | 8h | 2,400 |
| 56 | 3.2.3.3 | 订单详情 | 4d | 2020-05-14 | 2020-05-19 | 55 | 0d |  | 王明杰 [80%] | 25.6h | 7,680 |
| 57 | 3.2.3.4 | 结算订单 | 3d | 2020-05-20 | 2020-05-22 | 56 | 0d |  | 王明杰 [80%] | 19.2h | 5,760 |
| 58 | 3.2.3.5 | 查看已完成订单 | 2d | 2020-05-25 | 2020-05-26 | 57 | 0d |  | 王明杰 [80%] | 12.8h | 3,840 |
| 59 | 3.2.4 | **商家模块** | 13d? | 2020-05-12 | 2020-05-28 | 45SS | 9d |  |  | 104h | 31,200 |
| 60 | 3.2.4.1 | 商家注册 | 1d? | 2020-05-12 | 2020-05-12 | 44 | 9d | 0d | 张晨旭 | 8h | 2,400 |
| 61 | 3.2.4.2 | 商家登录 | 1d? | 2020-05-13 | 2020-05-13 | 60 | 9d | 0d | 张晨旭 | 8h | 2,400 |
| 62 | 3.2.4.3 | 查看所有商品 | 3d | 2020-05-14 | 2020-05-18 | 61 | 9d | 0d | 张晨旭 | 24h | 7,200 |
| 63 | 3.2.4.4 | 添加商品 | 2d | 2020-05-19 | 2020-05-20 | 62 | 9d | 0d | 张晨旭 | 16h | 4,800 |
| 64 | 3.2.4.5 | 下架商品 | 1d | 2020-05-21 | 2020-05-21 | 63 | 9d | 0d | 张晨旭 | 8h | 2,400 |
| 65 | 3.2.4.6 | 个人中心 | 3d | 2020-05-22 | 2020-05-26 | 64 | 9d | 0d | 张晨旭 | 24h | 7,200 |
| 66 | 3.2.4.7 | 查看所有订单 | 2d | 2020-05-27 | 2020-05-28 | 65 | 9d |  | 张晨旭 | 16h | 4,800 |
| 67 | 3.2.5 | **管理员模块** | 11d | 2020-05-27 | 2020-06-10 | 53 | 0d |  |  | 88h | 26,400 |
| 68 | 3.2.5.1 | 商家审核 | 3d | 2020-05-27 | 2020-05-29 | 58 | 0d |  | 王明杰 | 24h | 7,200 |
| 69 | 3.2.5.2 | 促销活动 | 3d | 2020-06-01 | 2020-06-03 | 68 | 0d |  | 王明杰 | 24h | 7,200 |
| 70 | 3.2.5.3 | 商品推荐 | 3d | 2020-06-04 | 2020-06-08 | 69 | 0d |  | 王明杰 | 24h | 7,200 |
| 71 | 3.2.5.4 | 数据备份 | 2d | 2020-06-09 | 2020-06-10 | 70 | 0d |  | 王明杰 | 16h | 4,800 |
| 72 | 3.3 | **项目监控** | 38d? | 2020-03-31 | 2020-05-21 |  | 20d |  |  | 576h | 172,800 |
| 73 | 3.3.1 | 各项指标监控 | 30d? | 2020-03-31 | 2020-05-11 | 42SS | 18.25d | 0d | 康晓慧; 王明杰 | 480h | 144,000 |
| 74 | 3.3.2 | 监控评审 | 5d | 2020-05-12 | 2020-05-18 | 73 | 20d | 0d | 康晓慧 | 40h | 12,000 |
| 75 | 3.3.3 | 变更评审 | 2d | 2020-05-19 | 2020-05-20 | 74 | 20d | 0d | 康晓慧 | 16h | 4,800 |
| 76 | 3.3.4 | 例会 | 1d | 2020-05-21 | 2020-05-21 | 75 | 20d |  | 康晓慧; 刘潭; 王明杰; 张晨旭; 张浩宇 | 40h | 12,000 |

| ID | WBS | Task | Duration | Start | Finish | Predecessors | Total slack | Free slack | Resources | Work | Cost |
| --- | --- | --- | --- | --- | --- | --- | --- | --- | --- | --- | --- |
| 77 | 3.4 | **管理干系人** | 3d? | 2020-04-03 | 2020-04-07 |  | 52d |  |  | 24h | 7,200 |
| 78 | 3.4.1 | 发布项目信息 | 1d? | 2020-04-03 | 2020-04-03 | 42 | 52d | 0d | 康晓慧 | 8h | 2,400 |
| 79 | 3.4.2 | 报告监控指标 | 1d? | 2020-04-06 | 2020-04-06 | 78 | 52d | 0d | 康晓慧 | 8h | 2,400 |
| 80 | 3.4.3 | 干系人沟通 | 1d? | 2020-04-07 | 2020-04-07 | 79 | 52d |  | 王明杰 | 8h | 2,400 |
| 81 | 3.5 | **团队建设** | 35d? | 2020-03-31 | 2020-05-18 |  | 23d |  |  | 320h | 96,000 |
| 82 | 3.5.1 | 培训 | 35d? | 2020-03-31 | 2020-05-18 | 42SS | 21.25d |  | 刘潭 [20%]; 王明杰 [20%]; 张晨旭; 张浩宇 | 224h | 67,200 |
| 83 | 3.5.2 | 娱乐活动 | 2d? | 2020-03-31 | 2020-04-01 | 42SS | 56d |  | 刘潭; 王明杰; 张晨旭; 张浩宇 | 64h | 19,200 |
| 84 | 3.5.3 | 沟通 | 1d? | 2020-03-31 | 2020-03-31 | 42SS | 57d |  | 刘潭; 王明杰; 张晨旭; 张浩宇 | 32h | 9,600 |
| 85 | 3.6 | 采购 | 5d? | 2020-04-27 | 2020-05-01 | 35 | 0d |  | 康晓慧; 王明杰 | 80h | 24,000 |
| 86 | 3.7 | 项目验收 | 3d | 2020-06-11 | 2020-06-15 | 43 | 0d |  | 康晓慧 | 24h | 7,200 |
| 87 | 4 | **收尾** | 34d? | 2020-05-04 | 2020-06-18 |  | 0d |  | 储备资金 [0.1%]; 间接成本 [0.1%] | 168h | 51,900 |
| 88 | 4.1 | 项目终验 | 1d | 2020-06-16 | 2020-06-16 | 86 | 2d |  | 康晓慧; 刘潭; 王明杰; 张晨旭; 张浩宇 | 40h | 12,000 |
| 89 | 4.2 | 结束采购 | 1d? | 2020-05-04 | 2020-05-04 | 85 | 0d |  | 康晓慧 | 8h | 2,400 |
| 90 | 4.3 | 项目内部收尾 | 3d | 2020-06-16 | 2020-06-18 | 86 | 0d |  | 康晓慧; 刘潭; 王明杰; 张晨旭; 张浩宇 | 120h | 36,000 |
